# lab_01

How a schedule from MS Project changed from version to version. A marks actual dates.

## Version 1 (saved 2024-03-17, file stage-01.mpp)

Note of the change: lab_04 done

| ID | WBS | Task | Duration | Start | Finish | Predecessors | Total float | Constraint |
| --- | --- | --- | --- | --- | --- | --- | --- | --- |
| 1 |  | Начало проекта | 0w | 2024-03-01 09:00 | 2024-03-01 09:00 |  | 39.75d |  |
| 2 | 2 | **Создание интерфейса** | 72.21d | 2024-03-01 09:00 | 2024-06-20 10:40 | 1 | 1.25d |  |
| 3 | 2.1 | **Разработка дизайна интерфейса** | 25.62d | 2024-03-01 09:00 | 2024-04-08 15:00 |  | 39.75d |  |
| 4 |  | Разработка 2D графических элементов | 3w | 2024-03-01 09:00 | 2024-03-25 12:00 |  | 39.75d |  |
| 5 |  | Разработка 3D графических элементов | 2w | 2024-03-01 09:00 | 2024-03-18 11:00 | 4SS | 39.75d |  |
| 6 |  | Создание заставки | 3w | 2024-03-18 11:00 | 2024-04-08 15:00 | 5 | 39.75d |  |
| 7 |  | Программирование интерфейса | 1.5w | 2024-06-07 15:40 | 2024-06-20 10:40 | 3, 12 | 1.25d |  |
| 8 | 3 | **Построение базы объектов** | 78.62d | 2024-03-25 12:00 | 2024-07-19 18:00 |  | 2.12d |  |
| 9 |  | Анализ и построение структуры базы объектов | 2w | 2024-03-25 12:00 | 2024-04-08 15:00 |  | 3d |  |
| 10 |  | Программирование средств обработки базы объектов | 1.5w | 2024-04-08 15:00 | 2024-04-18 10:00 | 9 | 3d |  |
| 11 |  | Наполнение базы объектов | 12w | 2024-04-19 09:00 | 2024-07-19 18:00 | 10 | 2.12d | finish no earlier than 2024-07-19 18:00 |
| 12 | 4 | **Создание ядра GIS** | 64.71d | 2024-03-01 09:00 | 2024-06-07 15:40 |  | 1.25d |  |
| 13 |  | Анализ и проектирование ядра | 3w | 2024-03-01 09:00 | 2024-03-25 12:00 |  | 1.25d |  |
| 14 |  | Создание модели ядра | 2.02w | 2024-03-25 12:00 | 2024-04-08 12:49 | 13 | 1.25d |  |
| 15 |  | Тестирование модели ядра | 0.25w | 2024-04-08 12:49 | 2024-04-19 10:49 | 14 | 1.25d |  |
| 16 |  | Создание рабочей версии ядра | 6.1w | 2024-04-19 10:49 | 2024-06-07 15:40 | 15 | 1.25d |  |
| 17 |  | Создание мультимедиа – наполнения | 6w | 2024-04-08 15:00 | 2024-05-28 12:00 | 3 | 39.75d |  |
| 18 |  | Создание справочной системы | 2w | 2024-07-01 12:40 | 2024-07-15 15:40 | 7 | 6.42d |  |
| 19 | 7 | **Создание руководства пользователя** | 17.25d | 2024-06-05 10:40 | 2024-07-01 12:40 | 7FS-10d | 1.25d |  |
| 20 |  | Разработка дизайна руководства | 1w | 2024-06-05 10:40 | 2024-06-13 10:40 |  | 1.25d |  |
| 21 |  | Написание руководства пользователя | 3w | 2024-06-07 10:40 | 2024-07-01 12:40 | 20SS+2d | 1.25d |  |
| 22 | 8 | **Создание web – сайта и поддержка** | 23.5d | 2024-06-07 10:40 | 2024-07-11 15:40 |  | 1.25d |  |
| 23 |  | Разработка структуры сайта | 0.2w | 2024-06-07 10:40 | 2024-06-10 10:40 | 21SS | 1.25d |  |
| 24 |  | Разработка дизайна сайта | 1.4w | 2024-06-10 10:40 | 2024-06-20 11:40 | 23 | 1.25d |  |
| 25 |  | Наполнение сайта | 3w | 2024-06-20 11:40 | 2024-07-11 15:40 | 24 | 1.25d |  |
| 26 |  | Тестирование сайта | 2.43w | 2024-07-04 15:40 | 2024-07-22 16:57 | 22FS-5d | 1.25d |  |
| 27 |  | Сдача сайта в эксплуатацию | 0w | 2024-07-22 16:57 | 2024-07-22 16:57 | 26 | 1.25d |  |
| 28 | 11 | **Совещание** | 93.12d | 2024-03-06 09:00 | 2024-07-24 10:00 |  | 0d |  |
| 29 |  | Совещание 1 | 1h | 2024-03-06 09:00 | 2024-03-06 10:00 |  |  | start no earlier than 2024-03-06 09:00 |
| 30 |  | Совещание 2 | 1h | 2024-03-13 09:00 | 2024-03-13 10:00 |  |  | start no earlier than 2024-03-13 09:00 |
| 31 |  | Совещание 3 | 1h | 2024-03-20 09:00 | 2024-03-20 10:00 |  |  | start no earlier than 2024-03-20 09:00 |
| 32 |  | Совещание 4 | 1h | 2024-03-27 09:00 | 2024-03-27 10:00 |  |  | start no earlier than 2024-03-27 09:00 |
| 33 |  | Совещание 5 | 1h | 2024-04-03 09:00 | 2024-04-03 10:00 |  |  | start no earlier than 2024-04-03 09:00 |
| 34 |  | Совещание 6 | 1h | 2024-04-10 09:00 | 2024-04-10 10:00 |  |  | start no earlier than 2024-04-10 09:00 |
| 35 |  | Совещание 7 | 1h | 2024-04-17 09:00 | 2024-04-17 10:00 |  |  | start no earlier than 2024-04-17 09:00 |
| 36 |  | Совещание 8 | 1h | 2024-04-24 09:00 | 2024-04-24 10:00 |  |  | start no earlier than 2024-04-24 09:00 |
| 37 |  | Совещание 10 | 1h | 2024-05-08 09:00 | 2024-05-08 10:00 |  |  | start no earlier than 2024-05-08 09:00 |
| 38 |  | Совещание 11 | 1h | 2024-05-15 09:00 | 2024-05-15 10:00 |  |  | start no earlier than 2024-05-15 09:00 |
| 39 |  | Совещание 12 | 1h | 2024-05-22 09:00 | 2024-05-22 10:00 |  |  | start no earlier than 2024-05-22 09:00 |
| 40 |  | Совещание 13 | 1h | 2024-05-29 09:00 | 2024-05-29 10:00 |  |  | start no earlier than 2024-05-29 09:00 |
| 41 |  | Совещание 14 | 1h | 2024-06-05 09:00 | 2024-06-05 10:00 |  |  | start no earlier than 2024-06-05 09:00 |
| 42 |  | Совещание 16 | 1h | 2024-06-19 09:00 | 2024-06-19 10:00 |  |  | start no earlier than 2024-06-19 09:00 |
| 43 |  | Совещание 17 | 1h | 2024-06-26 09:00 | 2024-06-26 10:00 |  |  | start no earlier than 2024-06-26 09:00 |
| 44 |  | Совещание 18 | 1h | 2024-07-03 09:00 | 2024-07-03 10:00 |  |  | start no earlier than 2024-07-03 09:00 |
| 45 |  | Совещание 19 | 1h | 2024-07-10 09:00 | 2024-07-10 10:00 |  |  | start no earlier than 2024-07-10 09:00 |
| 46 |  | Совещание 20 | 1h | 2024-07-17 09:00 | 2024-07-17 10:00 |  |  | start no earlier than 2024-07-17 09:00 |
| 47 |  | Совещание 21 | 1h | 2024-07-24 09:00 | 2024-07-24 10:00 |  |  | start no earlier than 2024-07-24 09:00 |

## Version 2 (saved 2024-03-17, file stage-02.mpp)

Note of the change: lab_04 done

Last finish 2024-07-24 → 2024-08-07 (+14d). Complete tasks 0 → 1.

Changed:

| ID | Task | Start | Finish | Duration | Complete | Total float | Other |
| --- | --- | --- | --- | --- | --- | --- | --- |
| 2 | **Создание интерфейса** | 2024-03-01 09:00 A | 2024-06-20 10:40 → 2024-07-02 14:28 (+12d) | 72.21d → 80.56d | 0% → 36% | 1.25d → 0d |  |
| 3 | **Разработка дизайна интерфейса** | 2024-03-01 09:00 A | 2024-04-08 15:00 → 2024-04-12 18:00 (+4d) | 25.62d → 30d | 0% → 44% | 39.75d → 41.68d |  |
| 6 | Создание заставки | 2024-03-18 11:00 A | 2024-04-08 15:00 → 2024-04-12 18:00 A (+4d) | 3w → 3.88w | 0% → 100% | 39.75d → none |  |
| 7 | Программирование интерфейса | 2024-06-07 15:40 → 2024-06-19 15:28 (+12d) | 2024-06-20 10:40 → 2024-07-02 14:28 (+12d) | 1.5w → 2w |  | 1.25d → 0d | resources Программист #3; Программист #4; Программист #1; Программист #2 → Программист #3; Программист #1; Программист #2 |
| 8 | **Построение базы объектов** |  | 2024-07-19 18:00 → 2024-07-22 13:00 (+3d) | 78.62d → 79.12d |  | 2.12d → 11.74d |  |
| 10 | Программирование средств обработки базы объектов |  | 2024-04-18 10:00 → 2024-04-19 13:00 (+1d) | 1.5w → 2w |  | 3d → 11.74d | resources Программист #3; Программист #4; Программист #1; Программист #2 → Программист #3; Программист #1; Программист #2 |
| 11 | Наполнение базы объектов | 2024-04-19 09:00 → 2024-04-19 14:00 | 2024-07-19 18:00 → 2024-07-22 13:00 (+3d) |  |  | 2.12d → 11.74d |  |
| 12 | **Создание ядра GIS** |  | 2024-06-07 15:40 → 2024-06-19 15:28 (+12d) | 64.71d → 71.68d |  | 1.25d → 0d |  |
| 14 | Создание модели ядра |  |  | 2.02w → 2.25w |  | 1.25d → 0d |  |
| 15 | Тестирование модели ядра |  | 2024-04-19 10:49 → 2024-04-18 15:09 (-1d) | 0.25w → 0.33w |  | 1.25d → 0d | resources Программист #1; Программист #2; Программист #3; Программист #4 → Программист #1; Программист #2; Программист #3 |
| 16 | Создание рабочей версии ядра | 2024-04-19 10:49 → 2024-04-18 15:09 (-1d) | 2024-06-07 15:40 → 2024-06-19 15:28 (+12d) | 6.1w → 8.46w |  | 1.25d → 0d | resources Ведущий программист; Программист #1; Программист #2; Программист #3; Программист #4 → Ведущий программист; Программист #1; Программист #2; Программист #3 |
| 17 | Создание мультимедиа – наполнения | 2024-04-08 15:00 → 2024-04-15 09:00 (+7d) | 2024-05-28 12:00 → 2024-06-03 16:00 (+6d) |  |  | 39.75d → 45.49d |  |
| 18 | Создание справочной системы | 2024-07-01 12:40 → 2024-07-15 09:00 (+14d) | 2024-07-15 15:40 → 2024-07-29 11:00 (+14d) |  |  | 6.42d → 6.99d |  |
| 19 | **Создание руководства пользователя** | 2024-06-05 10:40 → 2024-06-18 14:28 (+13d) | 2024-07-01 12:40 → 2024-07-11 16:28 (+10d) |  |  | 1.25d → 0d |  |
| 20 | Разработка дизайна руководства | 2024-06-05 10:40 → 2024-06-18 14:28 (+13d) | 2024-06-13 10:40 → 2024-06-25 14:28 (+12d) |  |  | 1.25d → 0d |  |
| 21 | Написание руководства пользователя | 2024-06-07 10:40 → 2024-06-20 14:28 (+13d) | 2024-07-01 12:40 → 2024-07-11 16:28 (+10d) |  |  | 1.25d → 0d |  |
| 22 | **Создание web – сайта и поддержка** | 2024-06-07 10:40 → 2024-06-20 14:28 (+13d) | 2024-07-11 15:40 → 2024-07-24 09:28 (+13d) |  |  | 1.25d → 0d |  |
| 23 | Разработка структуры сайта | 2024-06-07 10:40 → 2024-06-20 14:28 (+13d) | 2024-06-10 10:40 → 2024-06-21 14:28 (+11d) |  |  | 1.25d → 0d |  |
| 24 | Разработка дизайна сайта | 2024-06-10 10:40 → 2024-06-21 14:28 (+11d) | 2024-06-20 11:40 → 2024-07-02 15:28 (+12d) |  |  | 1.25d → 0d |  |
| 25 | Наполнение сайта | 2024-06-20 11:40 → 2024-07-02 15:28 (+12d) | 2024-07-11 15:40 → 2024-07-24 09:28 (+13d) |  |  | 1.25d → 0d |  |
| 26 | Тестирование сайта | 2024-07-04 15:40 → 2024-07-17 09:28 (+13d) | 2024-07-22 16:57 → 2024-08-07 10:54 (+16d) | 2.43w → 3.36w |  | 1.25d → 0d | resources Ведущий программист; Программист #1; Программист #2; Программист #3; Программист #4 → Ведущий программист; Программист #1; Программист #2; Программист #3 |
| 27 | Сдача сайта в эксплуатацию | 2024-07-22 16:57 → 2024-08-07 10:54 (+16d) | 2024-07-22 16:57 → 2024-08-07 10:54 (+16d) |  |  | 1.25d → 0d |  |

## Version 3 (saved 2024-03-17, file stage-03.mpp)

Note of the change: lab_04 done

Last finish stays 2024-08-07.

Changed:

| ID | Task | Start | Finish | Duration | Total float | Other |
| --- | --- | --- | --- | --- | --- | --- |
| 2 | **Создание интерфейса** |  | 2024-07-02 14:28 → 2024-07-04 16:19 (+2d) | 80.56d → 82.79d |  |  |
| 7 | Программирование интерфейса | 2024-06-19 15:28 → 2024-06-21 17:19 (+2d) | 2024-07-02 14:28 → 2024-07-04 16:19 (+2d) |  |  |  |
| 12 | **Создание ядра GIS** |  | 2024-06-19 15:28 → 2024-06-21 17:19 (+2d) | 71.68d → 73.92d |  |  |
| 15 | Тестирование модели ядра |  | 2024-04-18 15:09 → 2024-04-22 17:00 (+4d) | 0.33w → 0.5w |  | resources Программист #1; Программист #2; Программист #3 → Программист #1; Программист #2; Программист #3; Стажер |
| 16 | Создание рабочей версии ядра | 2024-04-18 15:09 → 2024-04-22 17:00 (+4d) | 2024-06-19 15:28 → 2024-06-21 17:19 (+2d) |  |  |  |
| 18 | Создание справочной системы | 2024-07-15 09:00 → 2024-07-16 09:00 (+1d) | 2024-07-29 11:00 → 2024-07-30 11:00 (+1d) |  | 6.99d → 6.17d |  |
| 19 | **Создание руководства пользователя** | 2024-06-18 14:28 → 2024-06-20 16:19 (+2d) | 2024-07-11 16:28 → 2024-07-16 09:19 (+5d) |  |  |  |
| 20 | Разработка дизайна руководства | 2024-06-18 14:28 → 2024-06-20 16:19 (+2d) | 2024-06-25 14:28 → 2024-06-27 16:19 (+2d) |  |  |  |
| 21 | Написание руководства пользователя | 2024-06-20 14:28 → 2024-06-24 16:19 (+4d) | 2024-07-11 16:28 → 2024-07-16 09:19 (+5d) |  |  |  |
| 22 | **Создание web – сайта и поддержка** | 2024-06-20 14:28 → 2024-06-24 16:19 (+4d) | 2024-07-24 09:28 → 2024-07-26 11:19 (+2d) |  |  |  |
| 23 | Разработка структуры сайта | 2024-06-20 14:28 → 2024-06-24 16:19 (+4d) | 2024-06-21 14:28 → 2024-06-25 16:19 (+4d) |  |  |  |
| 24 | Разработка дизайна сайта | 2024-06-21 14:28 → 2024-06-25 16:19 (+4d) | 2024-07-02 15:28 → 2024-07-04 17:19 (+2d) |  |  |  |
| 25 | Наполнение сайта | 2024-07-02 15:28 → 2024-07-04 17:19 (+2d) | 2024-07-24 09:28 → 2024-07-26 11:19 (+2d) |  |  |  |
| 26 | Тестирование сайта | 2024-07-17 09:28 → 2024-07-19 11:19 (+2d) | 2024-08-07 10:54 → 2024-08-07 12:20 | 3.36w → 2.88w |  | resources Ведущий программист; Программист #1; Программист #2; Программист #3 → Ведущий программист; Программист #1; Программист #2; Программист #3; Стажер |
| 27 | Сдача сайта в эксплуатацию | 2024-08-07 10:54 → 2024-08-07 12:20 | 2024-08-07 10:54 → 2024-08-07 12:20 |  |  |  |

## Version 4 (data date 2024-05-16, saved 2024-03-17, file stage-04.mpp)

Note of the change: lab_04 done

Last finish 2024-08-07 → 2024-08-09 (+2d).

Changed:

| ID | Task | Start | Finish | Duration | Complete | Total float | Other |
| --- | --- | --- | --- | --- | --- | --- | --- |
| 2 | **Создание интерфейса** |  | 2024-07-04 16:19 → 2024-07-05 14:43 (+1d) | 82.79d → 83.59d | 36% → 37% |  |  |
| 7 | Программирование интерфейса | 2024-06-21 17:19 → 2024-06-26 09:43 (+5d) | 2024-07-04 16:19 → 2024-07-05 14:43 (+1d) | 2w → 1.65w |  |  | resources Программист #3; Программист #1; Программист #2 → Программист #3; Программист #1; Программист #2; Стажер |
| 8 | **Построение базы объектов** |  | 2024-07-22 13:00 → 2024-07-22 17:32 | 79.12d → 79.57d |  | 11.92d → 13.67d |  |
| 10 | Программирование средств обработки базы объектов |  | 2024-04-19 13:00 → 2024-04-19 17:32 |  |  | 11.74d → 13.67d |  |
| 11 | Наполнение базы объектов | 2024-04-19 14:00 → 2024-04-19 17:32 | 2024-07-22 13:00 → 2024-07-22 17:32 |  |  | 11.74d → 13.67d |  |
| 12 | **Создание ядра GIS** |  | 2024-06-21 17:19 → 2024-06-26 09:43 (+5d) | 73.92d → 76.09d |  |  |  |
| 14 | Создание модели ядра |  | 2024-04-08 12:49 → 2024-04-17 11:30 (+9d) | 2.25w → 2.74w |  |  |  |
| 15 | Тестирование модели ядра | 2024-04-08 12:49 → 2024-04-17 11:30 (+9d) | 2024-04-22 17:00 → 2024-05-06 15:41 (+14d) |  |  |  |  |
| 16 | Создание рабочей версии ядра | 2024-04-22 17:00 → 2024-05-06 15:41 (+14d) | 2024-06-21 17:19 → 2024-06-26 09:43 (+5d) | 8.46w → 7.35w |  |  | resources Ведущий программист; Программист #1; Программист #2; Программист #3 → Ведущий программист; Программист #1; Программист #2; Программист #3; Стажер |
| 17 | Создание мультимедиа – наполнения |  | 2024-06-03 16:00 → 2024-06-04 12:00 (+1d) |  |  | 45.49d → 47.24d | resources Мультимедиа корреспондент → Мультимедиа корреспондент; Лицензия на спец. ПО [1 шт] |
| 18 | Создание справочной системы | 2024-07-16 09:00 → 2024-07-17 10:43 (+1d) | 2024-07-30 11:00 → 2024-07-31 12:43 (+1d) |  |  | 6.17d → 7.15d |  |
| 19 | **Создание руководства пользователя** | 2024-06-20 16:19 → 2024-06-21 14:43 (+1d) | 2024-07-16 09:19 → 2024-07-17 10:43 (+1d) | 17.25d → 17.62d |  |  |  |
| 20 | Разработка дизайна руководства | 2024-06-20 16:19 → 2024-06-21 14:43 (+1d) | 2024-06-27 16:19 → 2024-06-28 15:43 (+1d) |  |  |  |  |
| 21 | Написание руководства пользователя | 2024-06-24 16:19 → 2024-06-25 14:43 (+1d) | 2024-07-16 09:19 → 2024-07-17 10:43 (+1d) |  |  |  |  |
| 22 | **Создание web – сайта и поддержка** | 2024-06-24 16:19 → 2024-06-25 14:43 (+1d) | 2024-07-26 11:19 → 2024-07-30 12:51 (+4d) | 23.5d → 24.89d |  |  |  |
| 23 | Разработка структуры сайта | 2024-06-24 16:19 → 2024-06-25 14:43 (+1d) | 2024-06-25 16:19 → 2024-06-26 14:43 (+1d) |  |  |  |  |
| 24 | Разработка дизайна сайта | 2024-06-25 16:19 → 2024-06-26 14:43 (+1d) | 2024-07-04 17:19 → 2024-07-08 10:43 (+4d) | 1.4w → 1.45w |  |  |  |
| 25 | Наполнение сайта | 2024-07-04 17:19 → 2024-07-08 10:43 (+4d) | 2024-07-26 11:19 → 2024-07-30 12:51 (+4d) |  |  |  |  |
| 26 | Тестирование сайта | 2024-07-19 11:19 → 2024-07-23 12:51 (+4d) | 2024-08-07 12:20 → 2024-08-09 14:53 (+2d) | 2.88w → 2.9w |  |  |  |
| 27 | Сдача сайта в эксплуатацию | 2024-08-07 12:20 → 2024-08-09 14:53 (+2d) | 2024-08-07 12:20 → 2024-08-09 14:53 (+2d) |  |  |  |  |
| 33 | Совещание 5 |  |  |  |  |  | resources 3D аниматор; Web-дизайнер; Ведущий программист; Мультимедиа корреспондент; Системный аналитик; Технический писатель; Художник-дизайнер → Ведущий программист |
| 34 | Совещание 6 |  |  |  |  |  | resources 3D аниматор; Web-дизайнер; Ведущий программист; Мультимедиа корреспондент; Системный аналитик; Технический писатель; Художник-дизайнер → Ведущий программист |
| 35 | Совещание 7 |  |  |  |  |  | resources 3D аниматор; Web-дизайнер; Ведущий программист; Мультимедиа корреспондент; Системный аналитик; Технический писатель; Художник-дизайнер → Ведущий программист; Мультимедиа корреспондент |
| 36 | Совещание 8 |  |  |  |  |  | resources 3D аниматор; Web-дизайнер; Ведущий программист; Мультимедиа корреспондент; Системный аналитик; Технический писатель; Художник-дизайнер → Ведущий программист; Мультимедиа корреспондент |
| 37 | Совещание 10 |  |  |  |  |  | resources 3D аниматор; Web-дизайнер; Ведущий программист; Мультимедиа корреспондент; Системный аналитик; Технический писатель; Художник-дизайнер → Ведущий программист; Мультимедиа корреспондент |
| 38 | Совещание 11 |  |  |  |  |  | resources 3D аниматор; Web-дизайнер; Ведущий программист; Мультимедиа корреспондент; Системный аналитик; Технический писатель; Художник-дизайнер → Ведущий программист; Мультимедиа корреспондент |
| 39 | Совещание 12 |  |  |  |  |  | resources 3D аниматор; Web-дизайнер; Ведущий программист; Мультимедиа корреспондент; Системный аналитик; Технический писатель; Художник-дизайнер → Мультимедиа корреспондент |
| 40 | Совещание 13 |  |  |  |  |  | resources 3D аниматор; Web-дизайнер; Ведущий программист; Мультимедиа корреспондент; Системный аналитик; Технический писатель; Художник-дизайнер → Мультимедиа корреспондент |
| 41 | Совещание 14 |  |  |  |  |  | resources 3D аниматор; Web-дизайнер; Ведущий программист; Мультимедиа корреспондент; Системный аналитик; Технический писатель; Художник-дизайнер → Мультимедиа корреспондент |
| 42 | Совещание 16 |  |  |  |  |  | resources 3D аниматор; Web-дизайнер; Ведущий программист; Мультимедиа корреспондент; Системный аналитик; Технический писатель; Художник-дизайнер → Ведущий программист; Мультимедиа корреспондент |
| 43 | Совещание 17 |  |  |  |  |  | resources 3D аниматор; Web-дизайнер; Ведущий программист; Мультимедиа корреспондент; Системный аналитик; Технический писатель; Художник-дизайнер → Ведущий программист; Мультимедиа корреспондент |
| 44 | Совещание 18 |  |  |  |  |  | resources 3D аниматор; Web-дизайнер; Ведущий программист; Мультимедиа корреспондент; Системный аналитик; Технический писатель; Художник-дизайнер → 3D аниматор; Web-дизайнер; Художник-дизайнер |
| 45 | Совещание 19 |  |  |  |  |  | resources 3D аниматор; Web-дизайнер; Ведущий программист; Мультимедиа корреспондент; Системный аналитик; Технический писатель; Художник-дизайнер → 3D аниматор; Web-дизайнер; Художник-дизайнер |
| 46 | Совещание 20 |  |  |  |  |  | resources 3D аниматор; Web-дизайнер; Ведущий программист; Мультимедиа корреспондент; Системный аналитик; Технический писатель; Художник-дизайнер → 3D аниматор; Web-дизайнер; Ведущий программист |
| 47 | Совещание 21 |  |  |  |  |  | resources 3D аниматор; Web-дизайнер; Ведущий программист; Мультимедиа корреспондент; Системный аналитик; Технический писатель; Художник-дизайнер → Web-дизайнер; Ведущий программист |

## Version 5 (data date 2024-05-16, saved 2024-03-17, file stage-05.mpp)

Note of the change: lab_04 done

Last finish stays 2024-08-09. Complete tasks 1 → 19.

Changed:

| ID | Task | Start | Finish | Complete | Total float |
| --- | --- | --- | --- | --- | --- |
| 1 | Начало проекта | 2024-03-01 09:00 A | 2024-03-01 09:00 A | 0% → 100% | 10.25d → none |
| 2 | **Создание интерфейса** |  |  | 37% → 84% |  |
| 3 | **Разработка дизайна интерфейса** |  | 2024-04-12 18:00 A | 44% → 100% | 46.09d → none |
| 4 | Разработка 2D графических элементов | 2024-03-01 09:00 A | 2024-03-25 12:00 A | 0% → 100% | 60.71d → none |
| 5 | Разработка 3D графических элементов | 2024-03-01 09:00 A | 2024-03-18 11:00 A | 0% → 100% | 65.84d → none |
| 8 | **Построение базы объектов** | 2024-03-25 12:00 A |  | 0% → 43% |  |
| 9 | Анализ и построение структуры базы объектов | 2024-03-25 12:00 A | 2024-04-08 15:00 A | 0% → 100% | 14.58d → none |
| 10 | Программирование средств обработки базы объектов | 2024-04-08 15:00 A | 2024-04-19 17:32 A | 0% → 100% | 13.67d → none |
| 11 | Наполнение базы объектов | 2024-04-19 17:32 A |  | 0% → 23% |  |
| 12 | **Создание ядра GIS** | 2024-03-01 09:00 A |  | 0% → 56% |  |
| 13 | Анализ и проектирование ядра | 2024-03-01 09:00 A | 2024-03-25 12:00 A | 0% → 100% | 0d → none |
| 14 | Создание модели ядра | 2024-03-25 12:00 A | 2024-04-17 11:30 A | 0% → 100% | 0d → none |
| 15 | Тестирование модели ядра | 2024-04-17 11:30 A | 2024-05-06 15:41 A | 0% → 100% | 0d → none |
| 16 | Создание рабочей версии ядра | 2024-05-06 15:41 A |  | 0% → 19% |  |
| 17 | Создание мультимедиа – наполнения | 2024-04-15 09:00 A |  | 0% → 60% |  |
| 28 | **Совещание** | 2024-03-06 09:00 A |  | 0% → 53% |  |
| 29 | Совещание 1 | 2024-03-06 09:00 A | 2024-03-06 10:00 A | 0% → 100% |  |
| 30 | Совещание 2 | 2024-03-13 09:00 A | 2024-03-13 10:00 A | 0% → 100% |  |
| 31 | Совещание 3 | 2024-03-20 09:00 A | 2024-03-20 10:00 A | 0% → 100% |  |
| 32 | Совещание 4 | 2024-03-27 09:00 A | 2024-03-27 10:00 A | 0% → 100% |  |
| 33 | Совещание 5 | 2024-04-03 09:00 A | 2024-04-03 10:00 A | 0% → 100% |  |
| 34 | Совещание 6 | 2024-04-10 09:00 A | 2024-04-10 10:00 A | 0% → 100% |  |
| 35 | Совещание 7 | 2024-04-17 09:00 A | 2024-04-17 10:00 A | 0% → 100% |  |
| 36 | Совещание 8 | 2024-04-24 09:00 A | 2024-04-24 10:00 A | 0% → 100% |  |
| 37 | Совещание 10 | 2024-05-08 09:00 A | 2024-05-08 10:00 A | 0% → 100% |  |
| 38 | Совещание 11 | 2024-05-15 09:00 A | 2024-05-15 10:00 A | 0% → 100% |  |

## Version 6 (data date 2024-05-16, saved 2024-03-19, file task_01.mpp)

Note of the change: lab_05 added

Last finish 2024-08-09 → 2024-08-15 (+6d). Complete tasks 19 → 1.

Changed:

| ID | Task | Start | Finish | Duration | Complete | Total float | Other |
| --- | --- | --- | --- | --- | --- | --- | --- |
| 1 | Начало проекта | 2024-03-01 09:00 A → 2024-03-01 09:00 | 2024-03-01 09:00 A → 2024-03-01 09:00 |  | 100% → 0% | none → 10.25d |  |
| 2 | **Создание интерфейса** |  | 2024-07-05 14:43 → 2024-07-09 16:58 (+4d) | 83.59d → 85.87d | 84% → 36% |  |  |
| 3 | **Разработка дизайна интерфейса** |  | 2024-04-12 18:00 A → 2024-04-12 18:00 |  | 100% → 44% | none → 47.3d |  |
| 4 | Разработка 2D графических элементов | 2024-03-01 09:00 A → 2024-03-01 09:00 | 2024-03-25 12:00 A → 2024-03-21 19:00 (-4d) |  | 100% → 0% | none → 63.3d |  |
| 5 | Разработка 3D графических элементов | 2024-03-01 09:00 A → 2024-03-01 09:00 | 2024-03-18 11:00 A → 2024-03-18 11:00 |  | 100% → 0% | none → 67.05d |  |
| 7 | Программирование интерфейса | 2024-06-26 09:43 → 2024-06-27 11:23 (+1d) | 2024-07-05 14:43 → 2024-07-09 16:58 (+4d) | 1.65w → 1.89w |  |  | resources Программист #3; Программист #1; Программист #2; Стажер → Программист #3; Программист #1; Программист #2; Стажер [50%] |
| 8 | **Построение базы объектов** | 2024-03-25 12:00 A → 2024-03-25 12:00 | 2024-07-22 17:32 → 2024-07-19 18:00 (-3d) | 79.57d → 78.62d | 43% → 0% | 13.67d → 18.2d |  |
| 9 | Анализ и построение структуры базы объектов | 2024-03-25 12:00 A → 2024-03-25 12:00 | 2024-04-08 15:00 A → 2024-04-08 15:00 |  | 100% → 0% | none → 32.68d |  |
| 10 | Программирование средств обработки базы объектов | 2024-04-08 15:00 A → 2024-04-08 15:00 | 2024-04-19 17:32 A → 2024-04-23 15:17 (+4d) | 2w → 2.3w | 100% → 0% | none → 32.68d | resources Программист #3; Программист #1; Программист #2 → Программист #3; Программист #1; Программист #2; Стажер [50%] |
| 11 | Наполнение базы объектов | 2024-04-19 17:32 A → 2024-05-21 10:08 (+32d) | 2024-07-22 17:32 → 2024-07-19 18:00 (-3d) | 12w → 8.57w | 23% → 0% | 13.67d → 18.2d | resources Наборщик данных #1; Наборщик данных #2; Наборщик данных #3; Наборщик данных #4; Наборщик данных #5 → Наборщик данных #1; Наборщик данных #2; Наборщик данных #3; Наборщик данных #4; Наборщик данных #5; Наборщик данных #6; Наборщик данных #7 |
| 12 | **Создание ядра GIS** | 2024-03-01 09:00 A → 2024-03-01 09:00 | 2024-06-26 09:43 → 2024-06-27 11:23 (+1d) | 76.09d → 77.3d | 56% → 0% |  |  |
| 13 | Анализ и проектирование ядра | 2024-03-01 09:00 A → 2024-03-01 09:00 | 2024-03-25 12:00 A → 2024-03-25 12:00 |  | 100% → 0% | none → 0d |  |
| 14 | Создание модели ядра | 2024-03-25 12:00 A → 2024-03-25 12:00 | 2024-04-17 11:30 A → 2024-04-16 16:16 (-1d) | 2.74w → 2.61w | 100% → 0% | none → 0d | resources Ведущий программист; Программист #1; Программист #2; Программист #3; Программист #4 → Ведущий программист; Программист #1; Программист #2; Программист #3; Программист #4; Стажер [50%] |
| 15 | Тестирование модели ядра | 2024-04-17 11:30 A → 2024-04-16 16:16 (-1d) | 2024-05-06 15:41 A → 2024-04-26 16:42 (-10d) | 0.5w → 0.31w | 100% → 0% | none → 0d | resources Программист #1; Программист #2; Программист #3; Стажер → Программист #1; Программист #2; Программист #3; Стажер [50%] |
| 16 | Создание рабочей версии ядра | 2024-05-06 15:41 A → 2024-04-26 16:42 (-10d) | 2024-06-26 09:43 → 2024-06-27 11:23 (+1d) | 7.35w → 8.24w | 19% → 0% |  | resources Ведущий программист; Программист #1; Программист #2; Программист #3; Стажер → Ведущий программист; Программист #1; Программист #2; Программист #3; Стажер [50%] |
| 17 | Создание мультимедиа – наполнения | 2024-04-15 09:00 A → 2024-04-15 09:00 | 2024-06-04 12:00 → 2024-05-13 16:00 (-22d) | 6w → 3.6w | 60% → 0% | 47.24d → 66.45d |  |
| 18 | Создание справочной системы | 2024-07-17 10:43 → 2024-07-22 09:00 (+5d) | 2024-07-31 12:43 → 2024-08-05 11:00 (+5d) |  |  | 7.15d → 7.95d |  |
| 19 | **Создание руководства пользователя** | 2024-06-21 14:43 → 2024-06-25 16:58 (+4d) | 2024-07-17 10:43 → 2024-07-19 12:58 (+2d) |  |  |  |  |
| 20 | Разработка дизайна руководства | 2024-06-21 14:43 → 2024-06-25 16:58 (+4d) | 2024-06-28 15:43 → 2024-07-02 11:58 (+4d) |  |  |  |  |
| 21 | Написание руководства пользователя | 2024-06-25 14:43 → 2024-06-27 16:58 (+2d) | 2024-07-17 10:43 → 2024-07-19 12:58 (+2d) |  |  |  |  |
| 22 | **Создание web – сайта и поддержка** | 2024-06-25 14:43 → 2024-06-27 16:58 (+2d) | 2024-07-30 12:51 → 2024-08-01 11:06 (+2d) | 24.89d → 24.39d |  |  |  |
| 23 | Разработка структуры сайта | 2024-06-25 14:43 → 2024-06-27 16:58 (+2d) | 2024-06-26 14:43 → 2024-06-28 16:58 (+2d) |  |  |  |  |
| 24 | Разработка дизайна сайта | 2024-06-26 14:43 → 2024-06-28 16:58 (+2d) | 2024-07-08 10:43 → 2024-07-09 15:58 (+1d) | 1.45w → 1.43w |  |  |  |
| 25 | Наполнение сайта | 2024-07-08 10:43 → 2024-07-09 15:58 (+1d) | 2024-07-30 12:51 → 2024-08-01 11:06 (+2d) |  |  |  |  |
| 26 | Тестирование сайта | 2024-07-23 12:51 → 2024-07-25 11:06 (+2d) | 2024-08-09 14:53 → 2024-08-15 10:34 (+6d) | 2.9w → 3.29w |  |  | resources Ведущий программист; Программист #1; Программист #2; Программист #3; Стажер → Ведущий программист; Программист #1; Программист #2; Программист #3; Стажер [50%] |
| 27 | Сдача сайта в эксплуатацию | 2024-08-09 14:53 → 2024-08-15 10:34 (+6d) | 2024-08-09 14:53 → 2024-08-15 10:34 (+6d) |  |  |  |  |
| 28 | **Совещание** | 2024-03-06 09:00 A → 2024-03-06 09:00 |  |  | 53% → 0% |  |  |
| 29 | Совещание 1 | 2024-03-06 09:00 A → 2024-03-06 09:00 | 2024-03-06 10:00 A → 2024-03-06 10:00 |  | 100% → 0% |  |  |
| 30 | Совещание 2 | 2024-03-13 09:00 A → 2024-03-13 09:00 | 2024-03-13 10:00 A → 2024-03-13 10:00 |  | 100% → 0% |  |  |
| 31 | Совещание 3 | 2024-03-20 09:00 A → 2024-03-20 09:00 | 2024-03-20 10:00 A → 2024-03-20 10:00 |  | 100% → 0% |  |  |
| 32 | Совещание 4 | 2024-03-27 09:00 A → 2024-03-27 09:00 | 2024-03-27 10:00 A → 2024-03-27 10:00 |  | 100% → 0% |  |  |
| 33 | Совещание 5 | 2024-04-03 09:00 A → 2024-04-03 09:00 | 2024-04-03 10:00 A → 2024-04-03 10:00 |  | 100% → 0% |  |  |
| 34 | Совещание 6 | 2024-04-10 09:00 A → 2024-04-10 09:00 | 2024-04-10 10:00 A → 2024-04-10 10:00 |  | 100% → 0% |  |  |
| 35 | Совещание 7 | 2024-04-17 09:00 A → 2024-04-17 09:00 | 2024-04-17 10:00 A → 2024-04-17 10:00 |  | 100% → 0% |  |  |
| 36 | Совещание 8 | 2024-04-24 09:00 A → 2024-04-24 09:00 | 2024-04-24 10:00 A → 2024-04-24 10:00 |  | 100% → 0% |  |  |
| 37 | Совещание 10 | 2024-05-08 09:00 A → 2024-05-08 09:00 | 2024-05-08 10:00 A → 2024-05-08 10:00 |  | 100% → 0% |  |  |
| 38 | Совещание 11 | 2024-05-15 09:00 A → 2024-05-15 09:00 | 2024-05-15 10:00 A → 2024-05-15 10:00 |  | 100% → 0% |  |  |

## Version 7 (data date 2024-05-16, saved 2024-03-24, file task_02.mpp)

Note of the change: lab_05 added

Last finish stays 2024-08-15. Complete tasks 1 → 20.

Changed:

| ID | Task | Start | Finish | Duration | Complete | Total float | Other |
| --- | --- | --- | --- | --- | --- | --- | --- |
| 1 | Начало проекта | 2024-03-01 09:00 A | 2024-03-01 09:00 A |  | 0% → 100% | 10.25d → none |  |
| 2 | **Создание интерфейса** |  |  |  | 36% → 82% |  |  |
| 3 | **Разработка дизайна интерфейса** |  | 2024-04-12 18:00 A |  | 44% → 100% | 47.3d → none |  |
| 4 | Разработка 2D графических элементов | 2024-03-01 09:00 A | 2024-03-21 19:00 A |  | 0% → 100% | 63.3d → none |  |
| 5 | Разработка 3D графических элементов | 2024-03-01 09:00 A | 2024-03-18 11:00 A |  | 0% → 100% | 67.05d → none |  |
| 8 | **Построение базы объектов** | 2024-03-25 12:00 A | 2024-07-19 18:00 → 2024-07-24 15:17 (+5d) | 78.62d → 81.29d | 0% → 42% | 18.2d → 15.53d |  |
| 9 | Анализ и построение структуры базы объектов | 2024-03-25 12:00 A | 2024-04-08 15:00 A |  | 0% → 100% | 32.68d → none |  |
| 10 | Программирование средств обработки базы объектов | 2024-04-08 15:00 A | 2024-04-23 15:17 A |  | 0% → 100% | 32.68d → none |  |
| 11 | Наполнение базы объектов | 2024-05-21 10:08 → 2024-04-23 15:17 A (-28d) | 2024-07-19 18:00 → 2024-07-24 15:17 (+5d) | 8.57w → 12w | 0% → 21% | 18.2d → 15.53d | resources Наборщик данных #1; Наборщик данных #2; Наборщик данных #3; Наборщик данных #4; Наборщик данных #5; Наборщик данных #6; Наборщик данных #7 → Наборщик данных #1; Наборщик данных #2; Наборщик данных #3; Наборщик данных #4; Наборщик данных #5 |
| 12 | **Создание ядра GIS** | 2024-03-01 09:00 A |  |  | 0% → 56% |  |  |
| 13 | Анализ и проектирование ядра | 2024-03-01 09:00 A | 2024-03-25 12:00 A |  | 0% → 100% | 0d → none |  |
| 14 | Создание модели ядра | 2024-03-25 12:00 A | 2024-04-16 16:16 A | 2.61w → 2.66w | 0% → 100% | 0d → none |  |
| 15 | Тестирование модели ядра | 2024-04-16 16:16 A | 2024-04-26 16:42 A |  | 0% → 100% | 0d → none |  |
| 16 | Создание рабочей версии ядра | 2024-04-26 16:42 A |  |  | 0% → 25% |  |  |
| 17 | Создание мультимедиа – наполнения | 2024-04-15 09:00 A | 2024-05-13 16:00 A |  | 0% → 100% | 66.45d → none |  |
| 28 | **Совещание** | 2024-03-06 09:00 A |  |  | 0% → 53% |  |  |
| 29 | Совещание 1 | 2024-03-06 09:00 A | 2024-03-06 10:00 A |  | 0% → 100% |  |  |
| 30 | Совещание 2 | 2024-03-13 09:00 A | 2024-03-13 10:00 A |  | 0% → 100% |  |  |
| 31 | Совещание 3 | 2024-03-20 09:00 A | 2024-03-20 10:00 A |  | 0% → 100% |  |  |
| 32 | Совещание 4 | 2024-03-27 09:00 A | 2024-03-27 10:00 A |  | 0% → 100% |  |  |
| 33 | Совещание 5 | 2024-04-03 09:00 A | 2024-04-03 10:00 A |  | 0% → 100% |  |  |
| 34 | Совещание 6 | 2024-04-10 09:00 A | 2024-04-10 10:00 A |  | 0% → 100% |  |  |
| 35 | Совещание 7 | 2024-04-17 09:00 A | 2024-04-17 10:00 A |  | 0% → 100% |  |  |
| 36 | Совещание 8 | 2024-04-24 09:00 A | 2024-04-24 10:00 A |  | 0% → 100% |  |  |
| 37 | Совещание 10 | 2024-05-08 09:00 A | 2024-05-08 10:00 A |  | 0% → 100% |  |  |
| 38 | Совещание 11 | 2024-05-15 09:00 A | 2024-05-15 10:00 A |  | 0% → 100% |  |  |
