# РК-1

How a schedule from MS Project changed from version to version. A marks actual dates.

## Version 1 (saved 2024-03-25, file task_02.mpp)

Note of the change: lab_05 added

| ID | Task | Duration | Start | Finish | Total float |
| --- | --- | --- | --- | --- | --- |
| 1 | Начало реализации проекта | 0d | 2024-04-01 | 2024-04-01 | 15d |
| 2 | Программирование | 1d | 2024-04-01 | 2024-04-01 | 14d |
| 3 | Постановка задачи | 5d | 2024-04-01 | 2024-04-05 | 10d |
| 4 | Разработка интерфейса | 10d | 2024-04-01 | 2024-04-12 | 5d |
| 5 | Разработка модулей обработки данных | 15d | 2024-04-01 | 2024-04-19 | 0d |
| 6 | Разработка база данных | 15d | 2024-04-01 | 2024-04-19 | 0d |
| 7 | Заполнение базы данных | 12d | 2024-04-01 | 2024-04-16 | 3d |
| 8 | Программирование завершено | 0d | 2024-04-01 | 2024-04-01 | 15d |
| 9 | Тестирование и отладка | 1d | 2024-04-01 | 2024-04-01 | 14d |
| 10 | Подготовка тестовых наборов данных | 5d | 2024-04-01 | 2024-04-05 | 10d |
| 11 | Тестирование и исправление ошибок | 15d | 2024-04-01 | 2024-04-19 | 0d |
| 12 | Отладка завершена | 0d | 2024-04-01 | 2024-04-01 | 15d |
| 13 | Разработка документации | 1d | 2024-04-01 | 2024-04-01 | 14d |
| 14 | Составление программной документации | 10d | 2024-04-01 | 2024-04-12 | 5d |
| 15 | Составление пользовательской документации | 15d | 2024-04-01 | 2024-04-19 | 0d |
| 16 | Конец проекта | 0d | 2024-04-01 | 2024-04-01 | 15d |

## Version 2 (saved 2024-03-25, file task_03.mpp)

Note of the change: lab_05 added

Last finish stays 2024-04-19.

Changed:

| ID | Task | Finish | Duration | Total float |
| --- | --- | --- | --- | --- |
| 2 | **Программирование** | 2024-04-01 → 2024-04-19 (+18d) | 1d → 15d | 14d → 0d |
| 9 | **Тестирование и отладка** | 2024-04-01 → 2024-04-19 (+18d) | 1d → 15d | 14d → 0d |
| 13 | **Разработка документации** | 2024-04-01 → 2024-04-19 (+18d) | 1d → 15d | 14d → 0d |

## Version 3 (saved 2024-03-25, file task_04.mpp)

Note of the change: lab_05 added

Last finish 2024-04-19 → 2024-07-10 (+82d).

Changed:

| ID | Task | Start | Finish | Duration | Total float | Predecessors |
| --- | --- | --- | --- | --- | --- | --- |
| 2 | **Программирование** | 2024-04-01 → 2024-04-02 (+1d) | 2024-04-19 → 2024-05-21 (+32d) | 15d → 32d |  |  |
| 3 | Постановка задачи | 2024-04-01 → 2024-04-02 (+1d) | 2024-04-05 → 2024-04-08 (+3d) |  | 10d → 0d | none → 1FS+1d |
| 4 | Разработка интерфейса | 2024-04-01 → 2024-04-09 (+8d) | 2024-04-12 → 2024-04-22 (+10d) |  | 5d → 2d | none → 3 |
| 5 | Разработка модулей обработки данных | 2024-04-01 → 2024-04-23 (+22d) | 2024-04-19 → 2024-05-17 (+28d) |  | 0d → 2d | none → 4 |
| 6 | Разработка база данных | 2024-04-01 → 2024-04-09 (+8d) | 2024-04-19 → 2024-04-27 (+8d) |  |  | none → 3 |
| 7 | Заполнение базы данных | 2024-04-01 → 2024-05-02 (+31d) | 2024-04-16 → 2024-05-21 (+35d) |  | 3d → 0d | none → 6 |
| 8 | Программирование завершено | 2024-04-01 → 2024-05-21 (+50d) | 2024-04-01 → 2024-05-21 (+50d) |  | 15d → 0d | none → 5, 7 |
| 9 | **Тестирование и отладка** | 2024-04-01 → 2024-05-15 (+44d) | 2024-04-19 → 2024-06-11 (+53d) | 15d → 20d | 0d → 20d |  |
| 10 | Подготовка тестовых наборов данных | 2024-04-01 → 2024-05-15 (+44d) | 2024-04-05 → 2024-05-21 (+46d) |  | 10d → 20d | none → 8FS-5d |
| 11 | Тестирование и исправление ошибок | 2024-04-01 → 2024-05-22 (+51d) | 2024-04-19 → 2024-06-11 (+53d) |  | 0d → 20d | none → 10 |
| 12 | Отладка завершена | 2024-04-01 → 2024-06-11 (+71d) | 2024-04-01 → 2024-06-11 (+71d) |  | 15d → 20d | none → 11 |
| 13 | **Разработка документации** | 2024-04-01 → 2024-06-05 (+65d) | 2024-04-19 → 2024-07-10 (+82d) | 15d → 25d |  |  |
| 14 | Составление программной документации | 2024-04-01 → 2024-06-05 (+65d) | 2024-04-12 → 2024-06-19 (+68d) |  | 5d → 0d | none → 8SS+10d |
| 15 | Составление пользовательской документации | 2024-04-01 → 2024-06-20 (+80d) | 2024-04-19 → 2024-07-10 (+82d) |  |  | none → 14 |
| 16 | Конец проекта | 2024-04-01 → 2024-07-10 (+100d) | 2024-04-01 → 2024-07-10 (+100d) |  | 15d → 0d | none → 15 |

## Version 4 (saved 2024-03-25, file task_06.mpp)

Note of the change: lab_05 added

Last finish stays 2024-07-10.

Changed:

| ID | Task | Other |
| --- | --- | --- |
| 2 | **Программирование** | resources none → Сервер базы данных |
| 3 | Постановка задачи | resources none → Аналитик; Ведущий программист |
| 4 | Разработка интерфейса | resources none → Ведущий программист; Программист 1 |
| 5 | Разработка модулей обработки данных | resources none → Программист 2; Программист 3 |
| 6 | Разработка база данных | resources none → Аналитик; Программист 1 |
| 7 | Заполнение базы данных | resources none → Наборщики данных [200%] |
| 10 | Подготовка тестовых наборов данных | resources none → Программист 1; Программист 3 |
| 11 | Тестирование и исправление ошибок | resources none → Ведущий программист; Программист 2 |
| 13 | **Разработка документации** | resources none → Картриджи для принтера [0.01 шт]; Бумага [0.01 пач] |
| 14 | Составление программной документации | resources none → Технический писатель |
| 15 | Составление пользовательской документации | resources none → Технический писатель |

## Version 5 (saved 2024-03-25, file task_07.mpp)

Note of the change: lab_05 added

Last finish 2024-07-10 → 2024-07-24 (+14d).

Changed:

| ID | Task | Start | Finish | Duration |
| --- | --- | --- | --- | --- |
| 2 | **Программирование** |  | 2024-05-21 → 2024-06-04 (+14d) | 32d → 42d |
| 6 | Разработка база данных | 2024-04-09 → 2024-04-23 (+14d) | 2024-04-27 → 2024-05-17 (+20d) |  |
| 7 | Заполнение базы данных | 2024-05-02 → 2024-05-20 (+18d) | 2024-05-21 → 2024-06-04 (+14d) |  |
| 8 | Программирование завершено | 2024-05-21 → 2024-06-04 (+14d) | 2024-05-21 → 2024-06-04 (+14d) |  |
| 9 | **Тестирование и отладка** | 2024-05-15 → 2024-05-29 (+14d) | 2024-06-11 → 2024-06-26 (+15d) |  |
| 10 | Подготовка тестовых наборов данных | 2024-05-15 → 2024-05-29 (+14d) | 2024-05-21 → 2024-06-04 (+14d) |  |
| 11 | Тестирование и исправление ошибок | 2024-05-22 → 2024-06-05 (+14d) | 2024-06-11 → 2024-06-26 (+15d) |  |
| 12 | Отладка завершена | 2024-06-11 → 2024-06-26 (+15d) | 2024-06-11 → 2024-06-26 (+15d) |  |
| 13 | **Разработка документации** | 2024-06-05 → 2024-06-20 (+15d) | 2024-07-10 → 2024-07-24 (+14d) |  |
| 14 | Составление программной документации | 2024-06-05 → 2024-06-20 (+15d) | 2024-06-19 → 2024-07-03 (+14d) |  |
| 15 | Составление пользовательской документации | 2024-06-20 → 2024-07-04 (+14d) | 2024-07-10 → 2024-07-24 (+14d) |  |
| 16 | Конец проекта | 2024-07-10 → 2024-07-24 (+14d) | 2024-07-10 → 2024-07-24 (+14d) |  |

## Version 6 (saved 2024-03-25, file task_08.mpp)

Note of the change: lab_05 added

Last finish 2024-07-24 → 2024-07-31 (+7d).

Added:

| ID | Task | Duration | Start | Finish | Constraint | Resources |
| --- | --- | --- | --- | --- | --- | --- |
| 17 | **Профилактика оборудования** | 51.62d | 2024-04-23 09:00 | 2024-07-16 12:00 |  |  |
| 18 | Профилактика оборудования 1 | 3h | 2024-04-23 09:00 | 2024-04-23 12:00 | start no earlier than 2024-04-23 09:00 | Специалист из сторонней организации [1 обсл] |
| 19 | Профилактика оборудования 2 | 3h | 2024-05-07 09:00 | 2024-05-07 12:00 | start no earlier than 2024-05-07 09:00 | Специалист из сторонней организации [1 обсл] |
| 20 | Профилактика оборудования 3 | 3h | 2024-05-21 09:00 | 2024-05-21 12:00 | start no earlier than 2024-05-21 09:00 | Специалист из сторонней организации [1 обсл] |
| 21 | Профилактика оборудования 4 | 3h | 2024-06-04 09:00 | 2024-06-04 12:00 | start no earlier than 2024-06-04 09:00 | Специалист из сторонней организации [1 обсл] |
| 22 | Профилактика оборудования 5 | 3h | 2024-06-18 09:00 | 2024-06-18 12:00 | start no earlier than 2024-06-18 09:00 | Специалист из сторонней организации [1 обсл] |
| 23 | Профилактика оборудования 6 | 3h | 2024-07-02 09:00 | 2024-07-02 12:00 | start no earlier than 2024-07-02 09:00 | Специалист из сторонней организации [1 обсл] |
| 24 | Профилактика оборудования 7 | 3h | 2024-07-16 09:00 | 2024-07-16 12:00 | start no earlier than 2024-07-16 09:00 | Специалист из сторонней организации [1 обсл] |

Changed:

| ID | Task | Start | Finish |
| --- | --- | --- | --- |
| 1 | Начало реализации проекта | 2024-04-01 → 2024-04-01 09:00 | 2024-04-01 → 2024-04-01 09:00 |
| 2 | **Программирование** | 2024-04-02 → 2024-04-02 09:00 | 2024-06-04 → 2024-06-06 17:00 (+2d) |
| 3 | Постановка задачи | 2024-04-02 → 2024-04-02 09:00 | 2024-04-08 → 2024-04-08 18:00 |
| 4 | Разработка интерфейса | 2024-04-09 → 2024-04-09 09:00 | 2024-04-22 → 2024-04-22 18:00 |
| 5 | Разработка модулей обработки данных | 2024-04-23 → 2024-04-23 09:00 | 2024-05-17 → 2024-05-20 16:00 (+3d) |
| 6 | Разработка база данных | 2024-04-23 → 2024-04-23 09:00 | 2024-05-17 → 2024-05-20 16:00 (+3d) |
| 7 | Заполнение базы данных | 2024-05-20 → 2024-05-20 16:00 | 2024-06-04 → 2024-06-06 17:00 (+2d) |
| 8 | Программирование завершено | 2024-06-04 → 2024-06-06 17:00 (+2d) | 2024-06-04 → 2024-06-06 17:00 (+2d) |
| 9 | **Тестирование и отладка** | 2024-05-29 → 2024-05-30 14:00 (+1d) | 2024-06-26 → 2024-07-01 18:00 (+5d) |
| 10 | Подготовка тестовых наборов данных | 2024-05-29 → 2024-05-30 14:00 (+1d) | 2024-06-04 → 2024-06-06 17:00 (+2d) |
| 11 | Тестирование и исправление ошибок | 2024-06-05 → 2024-06-06 17:00 (+1d) | 2024-06-26 → 2024-07-01 18:00 (+5d) |
| 12 | Отладка завершена | 2024-06-26 → 2024-07-01 18:00 (+5d) | 2024-06-26 → 2024-07-01 18:00 (+5d) |
| 13 | **Разработка документации** | 2024-06-20 → 2024-06-24 15:00 (+4d) | 2024-07-24 → 2024-07-31 10:00 (+7d) |
| 14 | Составление программной документации | 2024-06-20 → 2024-06-24 15:00 (+4d) | 2024-07-03 → 2024-07-09 12:00 (+6d) |
| 15 | Составление пользовательской документации | 2024-07-04 → 2024-07-09 12:00 (+5d) | 2024-07-24 → 2024-07-31 10:00 (+7d) |
| 16 | Конец проекта | 2024-07-24 → 2024-07-31 10:00 (+7d) | 2024-07-24 → 2024-07-31 10:00 (+7d) |

## Version 7 (saved 2024-03-25, file task_09.mpp)

Note of the change: lab_05 added

Last finish 2024-07-31 → 2024-07-22 (-9d).

Changed:

| ID | Task | Start | Finish | Duration | Total float | Other |
| --- | --- | --- | --- | --- | --- | --- |
| 1 | Начало реализации проекта |  |  |  |  | baseline start none → 2024-04-01 09:00; baseline finish none → 2024-04-01 09:00 |
| 2 | **Программирование** |  | 2024-06-06 17:00 → 2024-05-28 10:00 (-9d) | 42d → 35d |  | baseline start none → 2024-04-02 09:00; baseline finish none → 2024-05-28 10:00 |
| 3 | Постановка задачи |  |  |  |  | baseline start none → 2024-04-02 09:00; baseline finish none → 2024-04-08 18:00 |
| 4 | Разработка интерфейса |  |  |  | 12d → 5d | baseline start none → 2024-04-09 09:00; baseline finish none → 2024-04-22 18:00 |
| 5 | Разработка модулей обработки данных |  |  |  | 12d → 5d | baseline start none → 2024-04-23 09:00; baseline finish none → 2024-05-20 16:00 |
| 6 | Разработка база данных |  | 2024-05-20 16:00 → 2024-05-13 12:00 (-7d) | 15d → 10d |  | baseline start none → 2024-04-23 09:00; baseline finish none → 2024-05-13 12:00 |
| 7 | Заполнение базы данных | 2024-05-20 16:00 → 2024-05-13 12:00 (-7d) | 2024-06-06 17:00 → 2024-05-28 10:00 (-9d) | 12d → 10d |  | baseline start none → 2024-05-13 12:00; baseline finish none → 2024-05-28 10:00 |
| 8 | Программирование завершено | 2024-06-06 17:00 → 2024-05-28 10:00 (-9d) | 2024-06-06 17:00 → 2024-05-28 10:00 (-9d) |  |  | baseline start none → 2024-05-28 10:00; baseline finish none → 2024-05-28 10:00 |
| 9 | **Тестирование и отладка** | 2024-05-30 14:00 → 2024-05-20 16:00 (-10d) | 2024-07-01 18:00 → 2024-06-20 15:00 (-11d) |  |  | baseline start none → 2024-05-20 16:00; baseline finish none → 2024-06-20 15:00 |
| 10 | Подготовка тестовых наборов данных | 2024-05-30 14:00 → 2024-05-20 16:00 (-10d) | 2024-06-06 17:00 → 2024-05-28 10:00 (-9d) |  |  | baseline start none → 2024-05-20 16:00; baseline finish none → 2024-05-28 10:00 |
| 11 | Тестирование и исправление ошибок | 2024-06-06 17:00 → 2024-05-28 10:00 (-9d) | 2024-07-01 18:00 → 2024-06-20 15:00 (-11d) |  |  | baseline start none → 2024-05-28 10:00; baseline finish none → 2024-06-20 15:00 |
| 12 | Отладка завершена | 2024-07-01 18:00 → 2024-06-20 15:00 (-11d) | 2024-07-01 18:00 → 2024-06-20 15:00 (-11d) |  |  | baseline start none → 2024-06-20 15:00; baseline finish none → 2024-06-20 15:00 |
| 13 | **Разработка документации** | 2024-06-24 15:00 → 2024-06-13 11:00 (-11d) | 2024-07-31 10:00 → 2024-07-22 10:00 (-9d) |  |  | baseline start none → 2024-06-13 11:00; baseline finish none → 2024-07-22 10:00 |
| 14 | Составление программной документации | 2024-06-24 15:00 → 2024-06-13 11:00 (-11d) | 2024-07-09 12:00 → 2024-06-27 18:00 (-12d) |  |  | baseline start none → 2024-06-13 11:00; baseline finish none → 2024-06-27 18:00 |
| 15 | Составление пользовательской документации | 2024-07-09 12:00 → 2024-06-28 09:00 (-11d) | 2024-07-31 10:00 → 2024-07-22 10:00 (-9d) |  |  | baseline start none → 2024-06-28 09:00; baseline finish none → 2024-07-22 10:00 |
| 16 | Конец проекта | 2024-07-31 10:00 → 2024-07-22 10:00 (-9d) | 2024-07-31 10:00 → 2024-07-22 10:00 (-9d) |  |  | baseline start none → 2024-07-22 10:00; baseline finish none → 2024-07-22 10:00 |
| 17 | **Профилактика оборудования** |  |  |  |  | baseline start none → 2024-04-23 09:00; baseline finish none → 2024-07-16 12:00 |
| 18 | Профилактика оборудования 1 |  |  |  |  | baseline start none → 2024-04-23 09:00; baseline finish none → 2024-04-23 12:00 |
| 19 | Профилактика оборудования 2 |  |  |  |  | baseline start none → 2024-05-07 09:00; baseline finish none → 2024-05-07 12:00 |
| 20 | Профилактика оборудования 3 |  |  |  |  | baseline start none → 2024-05-21 09:00; baseline finish none → 2024-05-21 12:00 |
| 21 | Профилактика оборудования 4 |  |  |  |  | baseline start none → 2024-06-04 09:00; baseline finish none → 2024-06-04 12:00 |
| 22 | Профилактика оборудования 5 |  |  |  |  | baseline start none → 2024-06-18 09:00; baseline finish none → 2024-06-18 12:00 |
| 23 | Профилактика оборудования 6 |  |  |  |  | baseline start none → 2024-07-02 09:00; baseline finish none → 2024-07-02 12:00 |
| 24 | Профилактика оборудования 7 |  |  |  |  | baseline start none → 2024-07-16 09:00; baseline finish none → 2024-07-16 12:00 |

## Version 8 (data date 2024-05-17, saved 2024-03-25, file task_10.mpp)

Note of the change: lab_05 added

Last finish stays 2024-07-22. Complete tasks 0 → 6.

Changed:

| ID | Task | Start | Finish | Complete | Total float |
| --- | --- | --- | --- | --- | --- |
| 1 | Начало реализации проекта | 2024-04-01 09:00 A | 2024-04-01 09:00 A | 0% → 100% | 0d → none |
| 2 | **Программирование** | 2024-04-02 09:00 A |  | 0% → 87% |  |
| 3 | Постановка задачи | 2024-04-02 09:00 A | 2024-04-08 18:00 A | 0% → 100% | 0d → none |
| 4 | Разработка интерфейса | 2024-04-09 09:00 A | 2024-04-22 18:00 A | 0% → 100% | 5d → none |
| 5 | Разработка модулей обработки данных | 2024-04-23 09:00 A |  | 0% → 95% |  |
| 6 | Разработка база данных | 2024-04-23 09:00 A | 2024-05-13 12:00 A | 0% → 100% | 0d → none |
| 7 | Заполнение базы данных | 2024-05-13 12:00 A |  | 0% → 43% |  |
| 17 | **Профилактика оборудования** | 2024-04-23 09:00 A |  | 0% → 29% |  |
| 18 | Профилактика оборудования 1 | 2024-04-23 09:00 A | 2024-04-23 12:00 A | 0% → 100% |  |
| 19 | Профилактика оборудования 2 | 2024-05-07 09:00 A | 2024-05-07 12:00 A | 0% → 100% |  |

## Version 9 (saved 2024-03-26, file task_02.mpp)

Note of the change: lab_06 implemented

Last finish 2024-07-22 → 2024-04-19 (-94d). Complete tasks 6 → 0.

Removed: 17 Профилактика оборудования; 18 Профилактика оборудования 1; 19 Профилактика оборудования 2; 20 Профилактика оборудования 3; 21 Профилактика оборудования 4; 22 Профилактика оборудования 5; 23 Профилактика оборудования 6; 24 Профилактика оборудования 7

Changed:

| ID | Task | Start | Finish | Duration | Complete | Total float | Predecessors | Other |
| --- | --- | --- | --- | --- | --- | --- | --- | --- |
| 1 | Начало реализации проекта | 2024-04-01 09:00 A → 2024-04-01 | 2024-04-01 09:00 A → 2024-04-01 |  | 100% → 0% | none → 15d |  | baseline start 2024-04-01 09:00 → none; baseline finish 2024-04-01 09:00 → none |
| 2 | Программирование | 2024-04-02 09:00 A → 2024-04-01 (-1d) | 2024-05-28 10:00 → 2024-04-01 (-57d) | 35d → 1d | 87% → 0% | 0d → 14d |  | resources Сервер базы данных → none; baseline start 2024-04-02 09:00 → none; baseline finish 2024-05-28 10:00 → none |
| 3 | Постановка задачи | 2024-04-02 09:00 A → 2024-04-01 (-1d) | 2024-04-08 18:00 A → 2024-04-05 (-3d) |  | 100% → 0% | none → 10d | 1FS+1d → none | resources Аналитик; Ведущий программист → none; baseline start 2024-04-02 09:00 → none; baseline finish 2024-04-08 18:00 → none |
| 4 | Разработка интерфейса | 2024-04-09 09:00 A → 2024-04-01 (-8d) | 2024-04-22 18:00 A → 2024-04-12 (-10d) |  | 100% → 0% | none → 5d | 3 → none | resources Ведущий программист; Программист 1 → none; baseline start 2024-04-09 09:00 → none; baseline finish 2024-04-22 18:00 → none |
| 5 | Разработка модулей обработки данных | 2024-04-23 09:00 A → 2024-04-01 (-22d) | 2024-05-20 16:00 → 2024-04-19 (-31d) |  | 95% → 0% | 5d → 0d | 4 → none | resources Программист 2; Программист 3 → none; baseline start 2024-04-23 09:00 → none; baseline finish 2024-05-20 16:00 → none |
| 6 | Разработка базы данных | 2024-04-23 09:00 A → 2024-04-01 (-22d) | 2024-05-13 12:00 A → 2024-04-19 (-24d) | 10d → 15d | 100% → 0% | none → 0d | 3 → none | was named Разработка база данных; resources Аналитик; Программист 1 → none; baseline start 2024-04-23 09:00 → none; baseline finish 2024-05-13 12:00 → none |
| 7 | Заполнение базы данных | 2024-05-13 12:00 A → 2024-04-01 (-42d) | 2024-05-28 10:00 → 2024-04-16 (-42d) | 10d → 12d | 43% → 0% | 0d → 3d | 6 → none | resources Наборщики данных [200%] → none; baseline start 2024-05-13 12:00 → none; baseline finish 2024-05-28 10:00 → none |
| 8 | Программирование завершено | 2024-05-28 10:00 → 2024-04-01 (-57d) | 2024-05-28 10:00 → 2024-04-01 (-57d) |  |  | 0d → 15d | 5, 7 → none | baseline start 2024-05-28 10:00 → none; baseline finish 2024-05-28 10:00 → none |
| 9 | Тестирование и отладка | 2024-05-20 16:00 → 2024-04-01 (-49d) | 2024-06-20 15:00 → 2024-04-01 (-80d) | 20d → 1d |  | 20d → 14d |  | baseline start 2024-05-20 16:00 → none; baseline finish 2024-06-20 15:00 → none |
| 10 | Подготовка тестовых наборов данных | 2024-05-20 16:00 → 2024-04-01 (-49d) | 2024-05-28 10:00 → 2024-04-05 (-53d) |  |  | 20d → 10d | 8FS-5d → none | resources Программист 1; Программист 3 → none; baseline start 2024-05-20 16:00 → none; baseline finish 2024-05-28 10:00 → none |
| 11 | Тестирование и исправление ошибок | 2024-05-28 10:00 → 2024-04-01 (-57d) | 2024-06-20 15:00 → 2024-04-19 (-62d) |  |  | 20d → 0d | 10 → none | resources Ведущий программист; Программист 2 → none; baseline start 2024-05-28 10:00 → none; baseline finish 2024-06-20 15:00 → none |
| 12 | Отладка завершена | 2024-06-20 15:00 → 2024-04-01 (-80d) | 2024-06-20 15:00 → 2024-04-01 (-80d) |  |  | 20d → 15d | 11 → none | baseline start 2024-06-20 15:00 → none; baseline finish 2024-06-20 15:00 → none |
| 13 | Разработка документации | 2024-06-13 11:00 → 2024-04-01 (-73d) | 2024-07-22 10:00 → 2024-04-01 (-112d) | 25d → 1d |  | 0d → 14d |  | resources Картриджи для принтера [0.01 шт]; Бумага [0.01 пач] → none; baseline start 2024-06-13 11:00 → none; baseline finish 2024-07-22 10:00 → none |
| 14 | Составление программной документации | 2024-06-13 11:00 → 2024-04-01 (-73d) | 2024-06-27 18:00 → 2024-04-12 (-76d) |  |  | 0d → 5d | 8SS+10d → none | resources Технический писатель → none; baseline start 2024-06-13 11:00 → none; baseline finish 2024-06-27 18:00 → none |
| 15 | Составление пользовательской документации | 2024-06-28 09:00 → 2024-04-01 (-88d) | 2024-07-22 10:00 → 2024-04-19 (-94d) |  |  |  | 14 → none | resources Технический писатель → none; baseline start 2024-06-28 09:00 → none; baseline finish 2024-07-22 10:00 → none |
| 16 | Конец проекта | 2024-07-22 10:00 → 2024-04-01 (-112d) | 2024-07-22 10:00 → 2024-04-01 (-112d) |  |  | 0d → 15d | 15 → none | baseline start 2024-07-22 10:00 → none; baseline finish 2024-07-22 10:00 → none |

## Version 10 (saved 2024-03-26, file task_03.mpp)

Note of the change: lab_06 implemented

Last finish stays 2024-04-19.

Changed:

| ID | Task | Finish | Duration | Total float |
| --- | --- | --- | --- | --- |
| 2 | **Программирование** | 2024-04-01 → 2024-04-19 (+18d) | 1d → 15d | 14d → 0d |
| 9 | **Тестирование и отладка** | 2024-04-01 → 2024-04-19 (+18d) | 1d → 15d | 14d → 0d |
| 13 | **Разработка документации** | 2024-04-01 → 2024-04-19 (+18d) | 1d → 15d | 14d → 0d |

## Version 11 (saved 2024-03-26, file task_04.mpp)

Note of the change: lab_06 implemented

Last finish 2024-04-19 → 2024-07-10 (+82d).

Changed:

| ID | Task | Start | Finish | Duration | Total float | Predecessors |
| --- | --- | --- | --- | --- | --- | --- |
| 2 | **Программирование** | 2024-04-01 → 2024-04-02 (+1d) | 2024-04-19 → 2024-05-21 (+32d) | 15d → 32d |  |  |
| 3 | Постановка задачи | 2024-04-01 → 2024-04-02 (+1d) | 2024-04-05 → 2024-04-08 (+3d) |  | 10d → 0d | none → 1FS+1d |
| 4 | Разработка интерфейса | 2024-04-01 → 2024-04-09 (+8d) | 2024-04-12 → 2024-04-22 (+10d) |  | 5d → 2d | none → 3 |
| 5 | Разработка модулей обработки данных | 2024-04-01 → 2024-04-23 (+22d) | 2024-04-19 → 2024-05-17 (+28d) |  | 0d → 2d | none → 4 |
| 6 | Разработка базы данных | 2024-04-01 → 2024-04-09 (+8d) | 2024-04-19 → 2024-04-27 (+8d) |  |  | none → 3 |
| 7 | Заполнение базы данных | 2024-04-01 → 2024-05-02 (+31d) | 2024-04-16 → 2024-05-21 (+35d) |  | 3d → 0d | none → 6 |
| 8 | Программирование завершено | 2024-04-01 → 2024-05-21 (+50d) | 2024-04-01 → 2024-05-21 (+50d) |  | 15d → 0d | none → 5, 7 |
| 9 | **Тестирование и отладка** | 2024-04-01 → 2024-05-15 (+44d) | 2024-04-19 → 2024-06-11 (+53d) | 15d → 20d | 0d → 20d |  |
| 10 | Подготовка тестовых наборов данных | 2024-04-01 → 2024-05-15 (+44d) | 2024-04-05 → 2024-05-21 (+46d) |  | 10d → 20d | none → 8FS-5d |
| 11 | Тестирование и исправление ошибок | 2024-04-01 → 2024-05-22 (+51d) | 2024-04-19 → 2024-06-11 (+53d) |  | 0d → 20d | none → 10 |
| 12 | Отладка завершена | 2024-04-01 → 2024-06-11 (+71d) | 2024-04-01 → 2024-06-11 (+71d) |  | 15d → 20d | none → 11 |
| 13 | **Разработка документации** | 2024-04-01 → 2024-06-05 (+65d) | 2024-04-19 → 2024-07-10 (+82d) | 15d → 25d |  |  |
| 14 | Составление программной документации | 2024-04-01 → 2024-06-05 (+65d) | 2024-04-12 → 2024-06-19 (+68d) |  | 5d → 0d | none → 8SS+10d |
| 15 | Составление пользовательской документации | 2024-04-01 → 2024-06-20 (+80d) | 2024-04-19 → 2024-07-10 (+82d) |  |  | none → 14 |
| 16 | Конец проекта | 2024-04-01 → 2024-07-10 (+100d) | 2024-04-01 → 2024-07-10 (+100d) |  | 15d → 0d | none → 15 |

## Version 12 (saved 2024-03-26, file task_06.mpp)

Note of the change: lab_06 implemented

Last finish 2024-07-10 → 2024-07-08 (-2d).

Changed:

| ID | Task | Start | Finish | Duration | Total float | Other |
| --- | --- | --- | --- | --- | --- | --- |
| 2 | **Программирование** |  | 2024-05-21 → 2024-05-17 (-4d) | 32d → 30d |  | resources none → Сервер базы данных |
| 3 | Постановка задачи |  |  |  |  | resources none → Ведущий программист; Аналитик |
| 4 | Разработка интерфейса |  |  |  | 2d → 0d | resources none → Ведущий программист; Программист 1 |
| 5 | Разработка модулей обработки данных |  |  |  | 2d → 0d | resources none → Программист 2; Программист 3 |
| 6 | Разработка базы данных |  |  |  | 0d → 4d | resources none → Аналитик; Программист 1 |
| 7 | Заполнение базы данных |  | 2024-05-21 → 2024-05-13 (-8d) | 12d → 6d | 0d → 4d | resources none → Наборщики данных [200%] |
| 8 | Программирование завершено | 2024-05-21 → 2024-05-17 (-4d) | 2024-05-21 → 2024-05-17 (-4d) |  |  |  |
| 9 | **Тестирование и отладка** | 2024-05-15 → 2024-05-13 (-2d) | 2024-06-11 → 2024-06-07 (-4d) |  |  |  |
| 10 | Подготовка тестовых наборов данных | 2024-05-15 → 2024-05-13 (-2d) | 2024-05-21 → 2024-05-17 (-4d) |  |  | resources none → Программист 1; Программист 3 |
| 11 | Тестирование и исправление ошибок | 2024-05-22 → 2024-05-20 (-2d) | 2024-06-11 → 2024-06-07 (-4d) |  |  | resources none → Программист 2; Ведущий программист |
| 12 | Отладка завершена | 2024-06-11 → 2024-06-07 (-4d) | 2024-06-11 → 2024-06-07 (-4d) |  |  |  |
| 13 | **Разработка документации** | 2024-06-05 → 2024-06-03 (-2d) | 2024-07-10 → 2024-07-08 (-2d) |  |  | resources none → Картриджи для принтера [0.01 шт]; Бумага [0.01 пач] |
| 14 | Составление программной документации | 2024-06-05 → 2024-06-03 (-2d) | 2024-06-19 → 2024-06-17 (-2d) |  |  | resources none → Технический писатель |
| 15 | Составление пользовательской документации | 2024-06-20 → 2024-06-18 (-2d) | 2024-07-10 → 2024-07-08 (-2d) |  |  | resources none → Технический писатель |
| 16 | Конец проекта | 2024-07-10 → 2024-07-08 (-2d) | 2024-07-10 → 2024-07-08 (-2d) |  |  |  |

## Version 13 (saved 2024-03-26, file task_07.mpp)

Note of the change: lab_06 implemented

Last finish 2024-07-08 → 2024-07-16 (+8d).

Changed:

| ID | Task | Start | Finish | Duration | Total float |
| --- | --- | --- | --- | --- | --- |
| 2 | **Программирование** |  | 2024-05-17 → 2024-05-27 (+10d) | 30d → 36d |  |
| 6 | Разработка базы данных |  | 2024-04-27 → 2024-05-17 (+20d) | 15d → 25d | 4d → 0d |
| 7 | Заполнение базы данных | 2024-05-02 → 2024-05-20 (+18d) | 2024-05-13 → 2024-05-27 (+14d) |  | 4d → 0d |
| 8 | Программирование завершено | 2024-05-17 → 2024-05-27 (+10d) | 2024-05-17 → 2024-05-27 (+10d) |  |  |
| 9 | **Тестирование и отладка** | 2024-05-13 → 2024-05-21 (+8d) | 2024-06-07 → 2024-06-18 (+11d) |  |  |
| 10 | Подготовка тестовых наборов данных | 2024-05-13 → 2024-05-21 (+8d) | 2024-05-17 → 2024-05-27 (+10d) |  |  |
| 11 | Тестирование и исправление ошибок | 2024-05-20 → 2024-05-28 (+8d) | 2024-06-07 → 2024-06-18 (+11d) |  |  |
| 12 | Отладка завершена | 2024-06-07 → 2024-06-18 (+11d) | 2024-06-07 → 2024-06-18 (+11d) |  |  |
| 13 | **Разработка документации** | 2024-06-03 → 2024-06-11 (+8d) | 2024-07-08 → 2024-07-16 (+8d) |  |  |
| 14 | Составление программной документации | 2024-06-03 → 2024-06-11 (+8d) | 2024-06-17 → 2024-06-25 (+8d) |  |  |
| 15 | Составление пользовательской документации | 2024-06-18 → 2024-06-26 (+8d) | 2024-07-08 → 2024-07-16 (+8d) |  |  |
| 16 | Конец проекта | 2024-07-08 → 2024-07-16 (+8d) | 2024-07-08 → 2024-07-16 (+8d) |  |  |

## Version 14 (saved 2024-04-01, file task_08.mpp)

Note of the change: lab_06 implemented

Last finish 2024-07-16 → 2024-07-19 (+3d).

Added:

| ID | Task | Duration | Start | Finish | Constraint | Resources |
| --- | --- | --- | --- | --- | --- | --- |
| 17 | **Профилактика оборудования** | 53.12d | 2024-04-23 09:00 | 2024-07-16 12:00 |  |  |
| 18 | Профилактика оборудования 1 | 3h | 2024-04-23 09:00 | 2024-04-23 12:00 | start no earlier than 2024-04-23 09:00 | Специалист из аутсорсинговой компании [1 обслуживание] |
| 19 | Профилактика оборудования 2 | 3h | 2024-05-07 09:00 | 2024-05-07 12:00 | start no earlier than 2024-05-07 09:00 | Специалист из аутсорсинговой компании [1 обслуживание] |
| 20 | Профилактика оборудования 3 | 3h | 2024-05-21 09:00 | 2024-05-21 12:00 | start no earlier than 2024-05-21 09:00 | Специалист из аутсорсинговой компании [1 обслуживание] |
| 21 | Профилактика оборудования 4 | 3h | 2024-06-04 09:00 | 2024-06-04 12:00 | start no earlier than 2024-06-04 09:00 | Специалист из аутсорсинговой компании [1 обслуживание] |
| 22 | Профилактика оборудования 5 | 3h | 2024-06-18 09:00 | 2024-06-18 12:00 | start no earlier than 2024-06-18 09:00 | Специалист из аутсорсинговой компании [1 обслуживание] |
| 23 | Профилактика оборудования 6 | 3h | 2024-07-02 09:00 | 2024-07-02 12:00 | start no earlier than 2024-07-02 09:00 | Специалист из аутсорсинговой компании [1 обслуживание] |
| 24 | Профилактика оборудования 7 | 3h | 2024-07-16 09:00 | 2024-07-16 12:00 | start no earlier than 2024-07-16 09:00 | Специалист из аутсорсинговой компании [1 обслуживание] |

Changed:

| ID | Task | Start | Finish |
| --- | --- | --- | --- |
| 1 | Начало реализации проекта | 2024-04-01 → 2024-04-01 08:00 | 2024-04-01 → 2024-04-01 08:00 |
| 2 | **Программирование** | 2024-04-02 → 2024-04-02 09:00 | 2024-05-27 → 2024-05-29 10:00 (+2d) |
| 3 | Постановка задачи | 2024-04-02 → 2024-04-02 09:00 | 2024-04-08 → 2024-04-08 18:00 |
| 4 | Разработка интерфейса | 2024-04-09 → 2024-04-09 09:00 | 2024-04-22 → 2024-04-22 18:00 |
| 5 | Разработка модулей обработки данных | 2024-04-23 → 2024-04-23 09:00 | 2024-05-17 → 2024-05-20 16:00 (+3d) |
| 6 | Разработка базы данных | 2024-04-09 → 2024-04-09 09:00 | 2024-05-17 → 2024-05-20 16:00 (+3d) |
| 7 | Заполнение базы данных | 2024-05-20 → 2024-05-20 16:00 | 2024-05-27 → 2024-05-29 10:00 (+2d) |
| 8 | Программирование завершено | 2024-05-27 → 2024-05-29 10:00 (+2d) | 2024-05-27 → 2024-05-29 10:00 (+2d) |
| 9 | **Тестирование и отладка** | 2024-05-21 → 2024-05-22 10:00 (+1d) | 2024-06-18 → 2024-06-20 17:00 (+2d) |
| 10 | Подготовка тестовых наборов данных | 2024-05-21 → 2024-05-22 10:00 (+1d) | 2024-05-27 → 2024-05-29 10:00 (+2d) |
| 11 | Тестирование и исправление ошибок | 2024-05-28 → 2024-05-29 10:00 (+1d) | 2024-06-18 → 2024-06-20 17:00 (+2d) |
| 12 | Отладка завершена | 2024-06-18 → 2024-06-20 17:00 (+2d) | 2024-06-18 → 2024-06-20 17:00 (+2d) |
| 13 | **Разработка документации** | 2024-06-11 → 2024-06-13 14:00 (+2d) | 2024-07-16 → 2024-07-19 15:00 (+3d) |
| 14 | Составление программной документации | 2024-06-11 → 2024-06-13 14:00 (+2d) | 2024-06-25 → 2024-06-27 17:00 (+2d) |
| 15 | Составление пользовательской документации | 2024-06-26 → 2024-06-27 17:00 (+1d) | 2024-07-16 → 2024-07-19 15:00 (+3d) |
| 16 | Конец проекта | 2024-07-16 → 2024-07-19 15:00 (+3d) | 2024-07-16 → 2024-07-19 15:00 (+3d) |

## Version 15 (saved 2024-04-01, file task_09.mpp)

Note of the change: lab_06 implemented

Last finish 2024-07-19 → 2024-07-02 (-17d).

Removed: 24 Профилактика оборудования 7

Changed:

| ID | Task | Start | Finish | Duration | Total float | Other |
| --- | --- | --- | --- | --- | --- | --- |
| 1 | Начало реализации проекта |  |  |  |  | baseline start none → 2024-04-01 08:00; baseline finish none → 2024-04-01 08:00 |
| 2 | **Программирование** |  |  |  |  | baseline start none → 2024-04-02 09:00; baseline finish none → 2024-05-29 10:00 |
| 3 | Постановка задачи |  |  |  |  | baseline start none → 2024-04-02 09:00; baseline finish none → 2024-04-08 18:00 |
| 4 | Разработка интерфейса |  |  |  |  | baseline start none → 2024-04-09 09:00; baseline finish none → 2024-04-22 18:00 |
| 5 | Разработка модулей обработки данных |  |  |  |  | baseline start none → 2024-04-23 09:00; baseline finish none → 2024-05-20 16:00 |
| 6 | Разработка базы данных |  |  |  |  | baseline start none → 2024-04-09 09:00; baseline finish none → 2024-05-20 16:00 |
| 7 | Заполнение базы данных |  |  |  |  | baseline start none → 2024-05-20 16:00; baseline finish none → 2024-05-29 10:00 |
| 8 | Программирование завершено |  |  |  |  | baseline start none → 2024-05-29 10:00; baseline finish none → 2024-05-29 10:00 |
| 9 | **Тестирование и отладка** |  |  |  | 20d → 7.5d | baseline start none → 2024-05-22 10:00; baseline finish none → 2024-06-20 17:00 |
| 10 | Подготовка тестовых наборов данных |  |  |  | 20d → 7.5d | baseline start none → 2024-05-22 10:00; baseline finish none → 2024-05-29 10:00 |
| 11 | Тестирование и исправление ошибок |  |  |  | 20d → 7.5d | baseline start none → 2024-05-29 10:00; baseline finish none → 2024-06-20 17:00 |
| 12 | Отладка завершена |  |  |  | 20d → 7.5d | baseline start none → 2024-06-20 17:00; baseline finish none → 2024-06-20 17:00 |
| 13 | **Разработка документации** |  | 2024-07-19 15:00 → 2024-07-02 12:00 (-17d) | 25d → 12.5d |  | baseline start none → 2024-06-13 14:00; baseline finish none → 2024-07-02 12:00 |
| 14 | Составление программной документации |  | 2024-06-27 17:00 → 2024-06-20 17:00 (-7d) | 10d → 5d |  | resources Технический писатель → Технический писатель; Технический писатель 2; baseline start none → 2024-06-13 14:00; baseline finish none → 2024-06-20 17:00 |
| 15 | Составление пользовательской документации | 2024-06-27 17:00 → 2024-06-20 17:00 (-7d) | 2024-07-19 15:00 → 2024-07-02 12:00 (-17d) | 15d → 7.5d |  | resources Технический писатель → Технический писатель; Технический писатель 2; baseline start none → 2024-06-20 17:00; baseline finish none → 2024-07-02 12:00 |
| 16 | Конец проекта | 2024-07-19 15:00 → 2024-07-02 12:00 (-17d) | 2024-07-19 15:00 → 2024-07-02 12:00 (-17d) |  |  | baseline start none → 2024-07-02 12:00; baseline finish none → 2024-07-02 12:00 |
| 17 | **Профилактика оборудования** |  | 2024-07-16 12:00 → 2024-07-02 12:00 (-14d) | 53.12d → 43.5d |  | baseline start none → 2024-04-23 09:00; baseline finish none → 2024-07-02 12:00 |
| 18 | Профилактика оборудования 1 |  |  |  |  | baseline start none → 2024-04-23 09:00; baseline finish none → 2024-04-23 12:00 |
| 19 | Профилактика оборудования 2 |  |  |  |  | baseline start none → 2024-05-07 09:00; baseline finish none → 2024-05-07 12:00 |
| 20 | Профилактика оборудования 3 |  |  |  |  | baseline start none → 2024-05-21 09:00; baseline finish none → 2024-05-21 12:00 |
| 21 | Профилактика оборудования 4 |  |  |  |  | baseline start none → 2024-06-04 09:00; baseline finish none → 2024-06-04 12:00 |
| 22 | Профилактика оборудования 5 |  |  |  |  | baseline start none → 2024-06-18 09:00; baseline finish none → 2024-06-18 12:00 |
| 23 | Профилактика оборудования 6 |  |  |  |  | baseline start none → 2024-07-02 09:00; baseline finish none → 2024-07-02 12:00 |

## Version 16 (data date 2024-05-25, saved 2024-04-01, file task_10.mpp)

Note of the change: lab_06 implemented

Last finish 2024-07-02 → 2024-07-05 (+3d). Complete tasks 0 → 7.

Changed:

| ID | Task | Start | Finish | Duration | Complete | Total float |
| --- | --- | --- | --- | --- | --- | --- |
| 1 | Начало реализации проекта | 2024-04-01 08:00 A | 2024-04-01 08:00 A |  | 0% → 100% | 0d → none |
| 2 | **Программирование** | 2024-04-02 09:00 A | 2024-05-29 10:00 → 2024-05-31 18:00 (+2d) | 36d → 38.88d | 0% → 92% |  |
| 3 | Постановка задачи | 2024-04-02 09:00 A | 2024-04-08 18:00 A |  | 0% → 100% | 0d → none |
| 4 | Разработка интерфейса | 2024-04-09 09:00 A | 2024-04-22 18:00 → 2024-04-29 18:00 A (+7d) | 10d → 14.62d | 0% → 100% | 6d → none |
| 5 | Разработка модулей обработки данных | 2024-04-23 09:00 → 2024-05-02 09:00 A (+9d) | 2024-05-20 16:00 → 2024-05-27 16:00 (+7d) |  | 0% → 95% | 6d → 4.25d |
| 6 | Разработка базы данных | 2024-04-09 09:00 A | 2024-05-20 16:00 → 2024-05-23 18:00 A (+3d) | 25d → 27.88d | 0% → 100% | 0d → none |
| 7 | Заполнение базы данных | 2024-05-20 16:00 → 2024-05-24 09:00 A (+4d) | 2024-05-29 10:00 → 2024-05-31 18:00 (+2d) |  | 0% → 17% |  |
| 8 | Программирование завершено | 2024-05-29 10:00 → 2024-05-31 18:00 (+2d) | 2024-05-29 10:00 → 2024-05-31 18:00 (+2d) |  |  |  |
| 9 | **Тестирование и отладка** | 2024-05-22 10:00 → 2024-05-27 09:00 (+5d) | 2024-06-20 17:00 → 2024-06-26 13:00 (+6d) | 20d → 20.75d |  | 7.5d → 6.75d |
| 10 | Подготовка тестовых наборов данных | 2024-05-22 10:00 → 2024-05-27 09:00 (+5d) | 2024-05-29 10:00 → 2024-06-03 16:00 (+5d) | 5d → 5.75d |  | 7.5d → 6.75d |
| 11 | Тестирование и исправление ошибок | 2024-05-29 10:00 → 2024-06-03 16:00 (+5d) | 2024-06-20 17:00 → 2024-06-26 13:00 (+6d) |  |  | 7.5d → 6.75d |
| 12 | Отладка завершена | 2024-06-20 17:00 → 2024-06-26 13:00 (+6d) | 2024-06-20 17:00 → 2024-06-26 13:00 (+6d) |  |  | 7.5d → 6.75d |
| 13 | **Разработка документации** | 2024-06-13 14:00 → 2024-06-18 12:00 (+5d) | 2024-07-02 12:00 → 2024-07-05 15:00 (+3d) |  |  |  |
| 14 | Составление программной документации | 2024-06-13 14:00 → 2024-06-18 12:00 (+5d) | 2024-06-20 17:00 → 2024-06-25 16:00 (+5d) |  |  |  |
| 15 | Составление пользовательской документации | 2024-06-20 17:00 → 2024-06-25 16:00 (+5d) | 2024-07-02 12:00 → 2024-07-05 15:00 (+3d) |  |  |  |
| 16 | Конец проекта | 2024-07-02 12:00 → 2024-07-05 15:00 (+3d) | 2024-07-02 12:00 → 2024-07-05 15:00 (+3d) |  |  |  |
| 17 | **Профилактика оборудования** | 2024-04-23 09:00 A |  |  | 0% → 50% |  |
| 18 | Профилактика оборудования 1 | 2024-04-23 09:00 A | 2024-04-23 12:00 A |  | 0% → 100% |  |
| 19 | Профилактика оборудования 2 | 2024-05-07 09:00 A | 2024-05-07 12:00 A |  | 0% → 100% |  |
| 20 | Профилактика оборудования 3 | 2024-05-21 09:00 A | 2024-05-21 12:00 A |  | 0% → 100% |  |
